Schedule from MS Project, 2011-01-27 to 2011-02-15.

## Calendars

- 标准: Mon-Fri 08:00-12:00, 13:00-17:00; Sat-Sun off.

## Resources

| Resource |
| --- |
| 毕晓林 |
| 田静涛 |

## Schedule

| ID | WBS | Task | Duration | Start | Finish | Predecessors | Total slack | Free slack | Constraint | Resources | Work |
| --- | --- | --- | --- | --- | --- | --- | --- | --- | --- | --- | --- |
| 1 | 1 | **支付管理接入安全支付项目** | 14d? | 2011-01-27 | 2011-02-15 |  | 0d |  |  | 毕晓林; 田静涛 | 468h |
| 2 | 1.1 | **升级与安装** | 3d | 2011-01-27 | 2011-01-31 |  | 11d |  |  | 田静涛 | 48h |
| 3 | 1.1.1 | 和安全支付接口进行调试 | 1d | 2011-01-27 | 2011-01-27 |  | 11d | 0d | start no earlier than 2011-01-27 | 田静涛 | 8h |
| 4 | 1.1.2 | 安全支付非强制升级功能开发 | 1d | 2011-01-28 | 2011-01-28 | 3 | 12d | 0d |  | 田静涛 | 8h |
| 5 | 1.1.3 | 安全支付强制升级功能开发 | 1d | 2011-01-31 | 2011-01-31 | 4 | 11d |  |  | 田静涛 | 8h |
| 6 | 1.2 | **登陆账户互通** | 7d? | 2011-02-01 | 2011-02-09 |  | 4d |  |  | 田静涛 |  |
| 7 | 1.2.1 | 安全支付账户获取，合并账户 | 1d? | 2011-02-01 | 2011-02-01 |  | 3d | 0d | start no earlier than 2011-02-01 | 田静涛 |  |
| 8 | 1.2.2 | 账户登录和删除处理 | 1d? | 2011-02-09 | 2011-02-09 |  | 5d |  | start no earlier than 2011-02-09 | 田静涛 |  |
| 9 | 1.3 | **支付一期** | 3d | 2011-02-10 | 2011-02-14 | 7 | 1d |  |  | 田静涛 | 48h |
| 10 | 1.3.1 | 我要付款功能开发 | 1d | 2011-02-10 | 2011-02-10 |  | 2d | 0d | start no earlier than 2011-02-10 | 田静涛 | 8h |
| 11 | 1.3.2 | 生活缴费,话费充值,付款功能开发, | 1d | 2011-02-11 | 2011-02-11 | 10 | 1d | 0d | finish no earlier than 2011-02-01 | 田静涛 | 8h |
| 12 | 1.3.3 | 确认收货，交易付款功能开发 | 1d | 2011-02-14 | 2011-02-14 | 11 | 1d |  | start no earlier than 2011-02-09 | 田静涛 | 8h |
| 13 | 1.4 | 注册 | 0.5d | 2011-01-27 | 2011-01-27 |  | 10.5d | 0d | start no earlier than 2011-01-27 | 毕晓林 | 4h |
| 14 | 1.5 | **充值** | 2d | 2011-01-27 | 2011-01-31 | 13 | 10.5d |  |  | 毕晓林 | 32h |
| 15 | 1.5.1 | 接入安全支付充值接口调试 | 0.5d | 2011-01-27 | 2011-01-27 |  | 10.5d | 0d |  | 毕晓林 | 4h |
| 16 | 1.5.2 | 充值ui和相关ui修改 | 1.5d | 2011-01-28 | 2011-01-31 | 15 | 10.5d | 0.5d |  | 毕晓林 | 12h |
| 17 | 1.6 | **设置** | 11d | 2011-02-01 | 2011-02-15 | 16 | 0d |  |  | 毕晓林 | 112h |
| 18 | 1.6.1 | 和安全支付设置服务器进行接口调试 | 1d | 2011-02-01 | 2011-02-01 |  | 10d |  | finish no earlier than 2011-02-01 | 毕晓林 | 8h |
| 19 | 1.6.2 | 已安装安全支付功能开发 | 1d | 2011-02-14 | 2011-02-14 |  | 1d |  | start no earlier than 2011-02-14 | 毕晓林 | 8h |
| 20 | 1.6.3 | 不安装安全支付设置功能开发 | 1d | 2011-02-15 | 2011-02-15 |  | 0d |  | finish no earlier than 2011-02-15 | 毕晓林 | 8h |

Notes:
- 1: 1.根据安全支付客户端和服务器器端的开发计划，暂定支付管理客户端开发开始时间为1月27号。 / 2.由于新年假期，根据个人请假情况，开发计划向后顺延
